Schedule from MS Project, 2019-06-17 to 2019-11-07, scheduled back from the finish, costs in ¥, A marks actual dates.
寰�杞�涓�鍥�

## Calendars

- 标准: Mon-Thu 08:00-12:00, 13:00-17:00; Fri 08:00-11:00, 13:00-17:00; Sat-Sun off.

## Resources

| Resource | Rate | Cost per use |
| --- | --- | --- |
| 项目经理 | 60 |  |
| UI设计师 | 40 |  |
| 程序员1 | 45 |  |
| 程序员2 | 45 |  |
| 程序员3 | 45 |  |
| 测试专家1 | 60 |  |
| 测试专家2 | 60 |  |
| 测试员1 | 40 |  |
| 测试员2 | 40 |  |
| 开发专家1 | 60 |  |
| 开发专家2 | 60 |  |
| 需求专家 | 50 |  |
| 质量专家 | 50 |  |
| 团队建设费 |  | 60 |
| 测试货物 |  | 60 |
| 间接成本 |  | 60 |
| 其他2 |  | 60 |
| 其他 |  | 60 |
| 程序员4 | 40 |  |

## Schedule

| ID | WBS | Task | Type | Duration | Start | Finish | Predecessors | Remaining | Constraint | Resources | Work | Cost | 总成本 | 间接成本 |
| --- | --- | --- | --- | --- | --- | --- | --- | --- | --- | --- | --- | --- | --- | --- |
| 1 | 1 | **启动** |  | 6d | 2019-06-17 | 2019-06-25 |  |  | as late as possible |  | 144h | 8,280 | ¥8,280.00 |  |
| 2 | 1.1 | 任命项目经理 | milestone, manual | 1d | 2019-06-17 | 2019-06-17 |  |  | as late as possible | 项目经理 | 8h | 480 | ¥480.00 | 50 |
| 3 | 1.2 | 组建核心团队 | manual | 1d | 2019-06-18 | 2019-06-18 |  |  | as late as possible | UI设计师; 测试专家2; 测试专家1; 项目经理; 开发专家1; 开发专家2; 需求专家 | 56h | 3,120 | ¥3,120.00 |  |
| 4 | 1.3 | 干系人分析 | manual | 1d | 2019-06-19 | 2019-06-19 |  |  | as late as possible | 项目经理 | 8h | 480 | ¥480.00 |  |
| 5 | 1.4 | 里程碑计划 | manual | 1d | 2019-06-20 | 2019-06-20 |  |  | as late as possible | 项目经理; 其他 | 8h | 540 | ¥540.00 |  |
| 6 | 1.5 | 制定项目章程 | manual | 1d | 2019-06-24 | 2019-06-24 | 2, 3, 4, 5 |  | as late as possible | 项目经理 | 8h | 480 | ¥480.00 |  |
| 7 | 1.6 | 项目启动大会 | manual | 1d | 2019-06-25 | 2019-06-25 | 6 |  | as late as possible | 项目经理; UI设计师; 测试专家1; 测试专家2; 开发专家1; 开发专家2; 需求专家; 团队建设费 | 56h | 3,180 | ¥3,180.00 |  |
| 8 | 2 | **规划** |  | 22d | 2019-06-21 A | 2019-07-23 |  | 22d | as late as possible |  | 293h | 16,650 | ¥16,650.00 |  |
| 9 | 2.1 | **规划范围** |  | 13.62d | 2019-06-21 | 2019-07-10 |  |  | as late as possible |  | 109h | 5,850 | ¥5,850.00 |  |
| 10 | 2.1.1 | 制定需求说明书 | manual | 1.88d | 2019-06-21 | 2019-06-24 | 7 |  | finish no later than 2019-06-24 | 需求专家 | 15h | 750 | ¥750.00 |  |
| 11 | 2.1.2 | 界面设计 | manual | 1.88d | 2019-06-27 | 2019-06-30 | 10 |  | as late as possible | UI设计师 | 15h | 600 | ¥600.00 |  |
| 12 | 2.1.3 | 详细设计说明书 | manual | 1d | 2019-07-01 | 2019-07-01 | 10 |  | as late as possible | UI设计师; 开发专家1; 项目经理; 需求专家 | 32h | 1,680 | ¥1,680.00 |  |
| 13 | 2.1.4 | 项目范围说明书 | manual | 3d | 2019-07-02 | 2019-07-04 | 10 |  | as late as possible | 项目经理 | 24h | 1,440 | ¥1,440.00 |  |
| 14 | 2.1.5 | 创建WBS | manual | 1.88d | 2019-07-05 | 2019-07-08 | 11, 12, 13 |  | as late as possible | 项目经理 | 15h | 900 | ¥900.00 |  |
| 15 | 2.1.6 | 形成范围基准 | manual | 1d | 2019-07-10 | 2019-07-10 | 14 |  | as late as possible | 项目经理 | 8h | 480 | ¥480.00 |  |
| 16 | 2.2 | **规划时间** |  | 7.75d | 2019-07-11 | 2019-07-22 |  |  | as late as possible |  | 40h | 2,400 | ¥2,400.00 |  |
| 17 | 2.2.1 | 排列工作包顺序 | manual | 1d | 2019-07-11 | 2019-07-12 | 15 |  | as late as possible | 项目经理 | 8h | 480 | ¥480.00 |  |
| 18 | 2.2.2 | 估算资源 | manual | 1d | 2019-07-15 | 2019-07-15 | 17 |  | as late as possible | 项目经理 | 8h | 480 | ¥480.00 |  |
| 19 | 2.2.3 | 估算持续时间 | manual | 1d | 2019-07-16 | 2019-07-16 | 18 |  | as late as possible | 项目经理 | 8h | 480 | ¥480.00 |  |
| 20 | 2.2.4 | 制定进度计划 | manual | 1d | 2019-07-18 | 2019-07-18 | 19 |  | as late as possible | 项目经理 | 8h | 480 | ¥480.00 |  |
| 21 | 2.2.5 | 形成进度基准 | manual | 1d | 2019-07-22 | 2019-07-22 | 20 |  | as late as possible | 项目经理 | 8h | 480 | ¥480.00 |  |
| 22 | 2.3 | **规划成本** |  | 12d | 2019-07-19 | 2019-08-06 |  |  | as late as possible |  | 40h | 2,400 | ¥2,400.00 |  |
| 23 | 2.3.1 | 项目成本估算 | manual | 2d | 2019-07-23 | 2019-07-24 | 21 |  | as late as possible | 项目经理 | 16h | 960 | ¥960.00 |  |
| 24 | 2.3.2 | 项目预算 | manual | 1d | 2019-07-25 | 2019-07-25 | 23 |  | as late as possible | 项目经理 | 8h | 480 | ¥480.00 |  |
| 25 | 2.3.3 | 形成范围基准 | manual | 2d | 2019-08-05 | 2019-08-06 | 24 |  | as late as possible | 项目经理 | 16h | 960 | ¥960.00 |  |

| ID | WBS | Task | Type | Duration | Start | Finish | Predecessors | Remaining | Actual start | Constraint | Resources | Work | Cost | 总成本 |
| --- | --- | --- | --- | --- | --- | --- | --- | --- | --- | --- | --- | --- | --- | --- |
| 26 | 2.4 | **规划质量** |  | 3.88d | 2019-07-12 | 2019-07-17 |  | 3.88d | 2019-07-15 | as late as possible |  | 24h | 1,200 | ¥1,200.00 |
| 27 | 2.4.1 | 制定测试计划 | manual | 1d | 2019-07-15 | 2019-07-15 | 15 |  |  | as late as possible | 质量专家 | 8h | 400 | ¥400.00 |
| 28 | 2.4.2 | 制定测试用例 | manual | 2d | 2019-07-16 A | 2019-07-17 | 27 | 2d |  | as late as possible | 质量专家 | 16h | 800 | ¥800.00 |
| 29 | 2.5 | **规划人力资源** |  | 6d | 2019-08-05 | 2019-08-13 |  |  |  | as late as possible |  | 24h | 1,440 | ¥1,440.00 |
| 30 | 2.5.1 | 制定人力资源计划 | manual | 2d | 2019-08-07 | 2019-08-08 | 18 |  |  | as late as possible | 项目经理 | 16h | 960 | ¥960.00 |
| 31 | 2.5.2 | 制定人员配备管理计划 | manual | 1d | 2019-08-13 | 2019-08-13 | 30 |  |  | as late as possible | 项目经理 | 8h | 480 | ¥480.00 |
| 32 | 2.6 | **规划沟通** |  | 2d | 2019-08-14 | 2019-08-15 |  |  |  | as late as possible |  | 8h | 480 | ¥480.00 |
| 33 | 2.6.1 | 制定规划沟通管理计划 | manual | 1d | 2019-08-15 | 2019-08-15 | 31 |  |  | as late as possible | 项目经理 | 8h | 480 | ¥480.00 |
| 34 | 2.7 | **规划宣传** |  | 5d | 2019-08-15 | 2019-08-22 |  |  |  | as late as possible |  | 16h | 960 | ¥960.00 |
| 35 | 2.7.1 | 制定宣传分析 | manual | 1d | 2019-08-19 | 2019-08-19 | 18 |  |  | as late as possible | 项目经理 | 8h | 480 | ¥480.00 |
| 36 | 2.7.2 | 制定宣传文件 | manual | 1d | 2019-08-20 | 2019-08-20 | 35 |  |  | as late as possible | 项目经理 | 8h | 480 | ¥480.00 |
| 37 | 2.8 | **规划风险** |  | 9.75d | 2019-09-02 | 2019-09-13 |  |  |  | as late as possible |  | 32h | 1,920 | ¥1,920.00 |
| 38 | 2.8.1 | 识别风险 | manual | 1d | 2019-09-02 | 2019-09-02 | 16, 22, 26, 29, 32, 34 |  |  | as late as possible | 项目经理 | 8h | 480 | ¥480.00 |
| 39 | 2.8.2 | 风险分析 | manual | 1d | 2019-09-09 | 2019-09-09 | 38 |  |  | as late as possible | 项目经理 | 8h | 480 | ¥480.00 |
| 40 | 2.8.3 | 制定风险登记册 | manual | 1d | 2019-09-11 | 2019-09-11 | 39 |  |  | as late as possible | 项目经理 | 8h | 480 | ¥480.00 |
| 41 | 2.8.4 | 规划整合 | manual | 1d | 2019-09-12 | 2019-09-13 | 40 |  |  | as late as possible | 项目经理 | 8h | 480 | ¥480.00 |
| 42 | 3 | **执行和监控** |  | 25d | 2019-09-23 | 2019-10-28 |  |  |  | as late as possible |  | 824h | 41,560 | ¥41,560.00 |
| 43 | 3.1 | 组建项目团队 | manual | 1d | 2019-09-23 | 2019-09-23 | 8 |  |  | as late as possible | UI设计师; 测试员1; 测试员2; 测试专家1; 测试专家2; 程序员1; 程序员2; 开发专家1; 开发专家2; 项目经理; 需求专家; 质量专家 | 96h | 4,880 | ¥4,880.00 |
| 44 | 3.2 | **项目执行** |  | 23d | 2019-09-25 | 2019-10-28 |  |  |  | as late as possible |  | 160h | 7,120 | ¥7,120.00 |
| 45 | 3.2.1 | **游客模块** |  | 23d | 2019-09-25 | 2019-10-28 |  |  |  | as late as possible |  | 80h | 3,520 | ¥3,520.00 |
| 46 | 3.2.1.1 | 游客登录 | manual | 2d | 2019-09-25 | 2019-09-26 | 43 |  |  | as late as possible | 程序员1 | 16h | 720 | ¥720.00 |
| 47 | 3.2.1.2 | 首页 | manual | 1d | 2019-10-01 | 2019-10-01 | 46 |  |  | as late as possible | 程序员1 | 8h | 360 | ¥360.00 |
| 48 | 3.2.1.3 | 浏览帖子 | manual | 1d | 2019-10-03 | 2019-10-03 | 47 |  |  | as late as possible | 程序员1 | 8h | 360 | ¥360.00 |
| 49 | 3.2.1.4 | 发帖子 | manual | 1d | 2019-10-15 | 2019-10-15 | 48 |  |  | as late as possible | 程序员1 | 8h | 360 | ¥360.00 |
| 50 | 3.2.1.5 | 寻找倾听者 | manual | 1d | 2019-10-17 | 2019-10-17 | 49 |  |  | as late as possible | 程序员1 | 8h | 360 | ¥360.00 |
| 51 | 3.2.1.6 | 在线聊天 | manual | 1d | 2019-10-22 | 2019-10-22 | 50 |  |  | as late as possible | 程序员1 | 8h | 360 | ¥360.00 |
| 52 | 3.2.1.7 | 浏览平台课程内容 | manual | 1d | 2019-10-24 | 2019-10-24 | 51 |  |  | as late as possible | 程序员1 | 8h | 360 | ¥360.00 |
| 53 | 3.2.1.8 | 下单 | manual | 1d | 2019-10-24 | 2019-10-25 | 52 |  |  | as late as possible | 程序员4 | 8h | 320 | ¥320.00 |
| 54 | 3.2.1.9 | 个人配置 | manual | 1d | 2019-10-28 | 2019-10-28 | 53 |  |  | as late as possible | 程序员4 | 8h | 320 | ¥320.00 |

| ID | WBS | Task | Type | Duration | Start | Finish | Predecessors | Constraint | Resources | Work | Cost | 总成本 |
| --- | --- | --- | --- | --- | --- | --- | --- | --- | --- | --- | --- | --- |
| 55 | 3.2.2 | **倾听者模块** |  | 14d | 2019-10-01 | 2019-10-20 |  | as late as possible |  | 40h | 1,800 | ¥1,800.00 |
| 56 | 3.2.2.1 | 注册入住 | manual | 1d | 2019-10-03 | 2019-10-03 | 43 | as late as possible | 程序员2 | 8h | 360 | ¥360.00 |
| 57 | 3.2.2.2 | 个人信息介绍 | manual | 1d | 2019-10-09 | 2019-10-09 | 56 | as late as possible | 程序员2 | 8h | 360 | ¥360.00 |
| 58 | 3.2.2.3 | 订单处理 | manual | 1d | 2019-10-14 | 2019-10-14 | 57 | as late as possible | 程序员2 | 8h | 360 | ¥360.00 |
| 59 | 3.2.2.4 | 在线聊天 | manual | 1d | 2019-10-15 | 2019-10-16 | 58 | as late as possible | 程序员2 | 8h | 360 | ¥360.00 |
| 60 | 3.2.2.5 | 收到评价 | manual | 1d | 2019-10-16 | 2019-10-16 | 59 | as late as possible | 程序员2 | 8h | 360 | ¥360.00 |
| 61 | 3.2.3 | **管理员模块** |  | 14.62d | 2019-10-01 | 2019-10-20 |  | as late as possible |  | 40h | 1,800 | ¥1,800.00 |
| 62 | 3.2.3.1 | 倾听者资格审核 | manual | 1d | 2019-10-03 | 2019-10-03 | 43 | as late as possible | 程序员3 | 8h | 360 | ¥360.00 |
| 63 | 3.2.3.2 | 平台内容管理 | manual | 1d | 2019-10-08 | 2019-10-08 | 62 | as late as possible | 程序员3 | 8h | 360 | ¥360.00 |
| 64 | 3.2.3.3 | 发布秘密的审核 | manual | 1d | 2019-10-10 | 2019-10-11 | 63 | as late as possible | 程序员3 | 8h | 360 | ¥360.00 |
| 65 | 3.2.3.4 | 优惠活动 | manual | 1d | 2019-10-15 | 2019-10-15 | 64 | as late as possible | 程序员3 | 8h | 360 | ¥360.00 |
| 66 | 3.2.3.5 | 统计分析 | manual | 1d | 2019-10-17 | 2019-10-18 | 65 | as late as possible | 程序员3 | 8h | 360 | ¥360.00 |
| 67 | 3.3 | **项目监控** |  | 5.88d | 2019-09-25 | 2019-10-02 |  | as late as possible |  | 192h | 10,320 | ¥10,320.00 |
| 68 | 3.3.1 | 各项指标监审 | manual | 1d | 2019-09-25 | 2019-09-25 | 43 | as late as possible | 测试员1; 测试员2; 测试专家1; 测试专家2; 项目经理 | 40h | 2,080 | ¥2,080.00 |
| 69 | 3.3.2 | 监控评审 | manual | 1d | 2019-09-26 | 2019-09-27 | 64 | as late as possible | 项目经理; UI设计师; 开发专家1; 开发专家2; 需求专家; 质量专家 | 48h | 2,560 | ¥2,560.00 |
| 70 | 3.3.3 | 变更评审 | manual | 1d | 2019-09-30 | 2019-09-30 | 65 | as late as possible | UI设计师; 开发专家1; 开发专家2; 项目经理; 需求专家 | 40h | 2,160 | ¥2,160.00 |
| 71 | 3.3.4 | 例会 | manual | 1d | 2019-10-01 | 2019-10-02 | 43 | as late as possible | UI设计师; 测试专家1; 测试专家2; 开发专家1; 开发专家2; 项目经理; 需求专家; 质量专家 | 64h | 3,520 | ¥3,520.00 |
| 72 | 3.4 | **管理干系人** |  | 10.75d | 2019-08-21 | 2019-09-05 |  | as late as possible |  | 40h | 2,400 | ¥2,400.00 |
| 73 | 3.4.1 | 发布项目信息 | manual | 2d | 2019-08-21 | 2019-08-22 | 43 | as late as possible | 项目经理 | 16h | 960 | ¥960.00 |
| 74 | 3.4.2 | 报告监控指标 | manual | 1d | 2019-08-26 | 2019-08-26 | 43 | as late as possible | 项目经理 | 8h | 480 | ¥480.00 |
| 75 | 3.4.3 | 干系人沟通 | manual | 2d | 2019-09-03 | 2019-09-04 | 43 | as late as possible | 项目经理 | 16h | 960 | ¥960.00 |
| 76 | 3.5 | **团队建设** |  | 12d | 2019-10-01 | 2019-10-17 |  | as late as possible |  | 336h | 16,840 | ¥16,840.00 |
| 77 | 3.5.1 | 培训 | manual | 1d | 2019-10-02 | 2019-10-02 | 43 | as late as possible | UI设计师; 测试员1; 测试员2; 测试专家1; 测试专家2; 程序员1; 程序员2; 程序员3; 开发专家1; 开发专家2; 需求专家; 质量专家 | 96h | 4,760 | ¥4,760.00 |
| 78 | 3.5.2 | 娱乐活动 | manual | 1d | 2019-10-07 | 2019-10-07 | 43 | as late as possible | UI设计师; 测试员1; 测试员2; 测试专家1; 测试专家2; 程序员1; 程序员2; 程序员3; 开发专家1; 开发专家2; 项目经理; 需求专家; 质量专家 | 104h | 5,240 | ¥5,240.00 |
| 79 | 3.5.3 | 沟通 | manual | 1d | 2019-10-21 | 2019-10-21 | 43 | as late as possible | UI设计师; 测试员1; 测试员2; 测试专家1; 测试专家2; 程序员1; 程序员2; 程序员3; 开发专家1; 开发专家2; 需求专家; 质量专家 | 96h | 4,760 | ¥4,760.00 |
| 80 | 3.5.4 | 招募联系 | manual | 1d | 2019-10-15 | 2019-10-15 | 43 | as late as possible | 项目经理 | 8h | 480 | ¥480.00 |
| 81 | 3.5.5 | 项目验收 | manual | 1d | 2019-10-17 | 2019-10-17 | 44 | as late as possible | UI设计师; 项目经理; 需求专家; 质量专家 | 32h | 1,600 | ¥1,600.00 |

| ID | WBS | Task | Type | Duration | Start | Finish | Predecessors | Constraint | Resources | Work | Cost | 总成本 |
| --- | --- | --- | --- | --- | --- | --- | --- | --- | --- | --- | --- | --- |
| 82 | 4 | **收尾** |  | 9d | 2019-10-25 | 2019-11-07 |  | as late as possible |  | 176h | 9,240 | ¥9,240.00 |
| 83 | 4.1 | 项目终验 | manual | 1d | 2019-10-24 | 2019-10-25 | 81 | as late as possible | UI设计师; 测试专家1; 测试专家2; 开发专家1; 开发专家2; 项目经理; 需求专家; 质量专家 | 64h | 3,520 | ¥3,520.00 |
| 84 | 4.2 | 结束招聘 | manual | 1d | 2019-10-29 | 2019-10-29 | 81 | as late as possible | 项目经理 | 8h | 480 | ¥480.00 |
| 85 | 4.3 | 项目内部收尾 | manual | 1d | 2019-10-31 | 2019-11-01 | 81 | as late as possible | UI设计师; 测试员1; 测试员2; 测试专家1; 测试专家2; 程序员1; 程序员2; 程序员3; 开发专家1; 开发专家2; 项目经理; 需求专家; 质量专家 | 104h | 5,240 | ¥5,240.00 |
